# Northwind BI Plan from Kimball by workflows

Schedule from MS Project, 2024-02-20 to 2024-07-03.

## Calendars

- Standard: Mon-Fri 08:00-12:00, 13:00-17:00; Sat-Sun off.

## Schedule

| ID | WBS | Task | Type | Duration | Start | Finish | Predecessors | Total slack | Free slack |
| --- | --- | --- | --- | --- | --- | --- | --- | --- | --- |
| 1 | 1 | **Planning, analyze, design** |  | 42d? | 2024-02-20 | 2024-04-17 |  | 0d |  |
| 2 | 1.1 | Project planning |  | 5d | 2024-02-20 | 2024-02-26 |  | 0d |  |
| 3 | 1.2 | Business requirements definition |  | 22d | 2024-02-27 | 2024-03-27 | 2 | 0d |  |
| 4 | 1.3 | Technical architecture design |  | 1d? | 2024-03-28 | 2024-03-28 | 3 | 50d | 0d |
| 5 | 1.4 | Dimensional modelling |  | 2d | 2024-03-28 | 2024-03-29 | 3 | 0d |  |
| 6 | 1.5 | BI application design |  | 5d | 2024-03-28 | 2024-04-03 | 3 | 10d | 0d |
| 7 | 1.6 | Physical design |  | 3d | 2024-04-01 | 2024-04-03 | 5 | 0d |  |
| 8 | 1.7 | ETL design |  | 10d | 2024-04-04 | 2024-04-17 | 7 | 0d |  |
| 9 | 2 | **Development** |  | 54d | 2024-03-29 | 2024-06-12 |  | 0d |  |
| 10 | 2.1 | Product selection & installation |  | 4d | 2024-03-29 | 2024-04-03 | 4 | 50d |  |
| 11 | 2.2 | ETL development |  | 40d | 2024-04-18 | 2024-06-12 | 8 | 0d |  |
| 12 | 2.3 | BI application development |  | 40d | 2024-04-04 | 2024-05-29 | 6 | 10d |  |
| 13 | 3 | Deployment |  | 5d | 2024-06-13 | 2024-06-19 | 12, 10, 11 | 0d |  |
| 14 | 4 | RELEASE 1 | milestone | 0d | 2024-06-19 | 2024-06-19 | 13 | 0d |  |
| 15 | 5 | Maintenance |  | 10d | 2024-06-20 | 2024-07-03 | 14 | 0d |  |
